Schedule from a web Gantt chart, 2024-07-22 to 2024-08-14.
Every day is a working day

## Schedule

| ID | WBS | Task | Duration | Start | Finish | Complete | Status |
| --- | --- | --- | --- | --- | --- | --- | --- |
| 2 | 1 | 下料 | 8d | 2024-07-22 | 2024-07-29 | 100% | done |
| 3 | 2 | 热处理（固溶） | 3d | 2024-07-29 | 2024-07-31 | 100% | done |
| 4 | 3 | 校直 | 1d | 2024-07-31 | 2024-07-31 |  |  |
| 5 | 4 | 粗车（3道） | 2d | 2024-08-01 | 2024-08-02 |  | waiting |
| 6 | 5 | 深冷/时效 | 2d | 2024-08-03 | 2024-08-04 |  | waiting |
| 7 | 6 | 精车（3道精车） | 3d | 2024-08-05 | 2024-08-07 |  | waiting |
| 8 | 7 | 粗磨（3次） | 3d | 2024-08-08 | 2024-08-10 |  | waiting |
| 9 | 8 | 镀硬铬 | 2d | 2024-08-10 | 2024-08-11 |  | waiting |
| 10 | 9 | 去氢处理 | 1d | 2024-08-12 | 2024-08-12 |  | waiting |
| 11 | 10 | 精磨 | 2d | 2024-08-13 | 2024-08-14 |  | waiting |
| 12 | 11 | 激光打标 | 1d | 2024-08-14 | 2024-08-14 |  | waiting |
| 13 | 12 | 全检 | 1d | 2024-08-14 | 2024-08-14 |  | waiting |
| 14 | 13 | OTS样件提交 | 1d | 2024-08-14 | 2024-08-14 |  | waiting |
